# Audit Log Migration Project Plan_V 1.1

Schedule from MS Project, 2023-01-23 to 2023-07-10, A marks actual dates.

## Calendars

- Standard: Mon-Fri 08:00-12:00, 13:00-17:00; Sat-Sun off. Exceptions (off unless hours are given): 2023-01-26 (Republic Day), 2023-03-22 (Ugadi), 2023-04-07 (Good Friday), 2023-06-29 (Eid-ul-Adha).

## Resources

| Resource |
| --- |
| PG-DEV-1 |
| PG-DEV-2 |
| PG-BA |
| PG-TL |
| PG-VL |
| UT |
| PG-PM |
| PG-TST-1 |
| PG-TST-2 |
| PG-Val |

## Schedule

| ID | WBS | Task | Type | Duration | Start | Finish | Predecessors | Complete | Remaining | Total slack | Free slack | Constraint | Resources | Work | Actual work |
| --- | --- | --- | --- | --- | --- | --- | --- | --- | --- | --- | --- | --- | --- | --- | --- |
| 1 | 1 | **Audit Log Migration** |  | 117d | 2023-01-23 A | 2023-07-10 |  | 10% | 105.21d | 0d |  |  |  | 2896h | 280.8h |
| 2 | 1.1 | **Initial Setup** |  | 20d | 2023-01-23 A | 2023-02-20 |  | 98% | 0.43d | 0d |  |  |  | 288h | 280.8h |
| 3 | 1.1.1 | Kick-off Meeting |  | 1d | 2023-01-24 A | 2023-01-24 A |  | 100% |  |  |  | start no earlier than 2023-01-24 |  |  |  |
| 4 | 1.1.2 | Setup Prudentia team access & Training Completion in Universal Portal |  | 15d | 2023-01-23 A | 2023-02-13 A |  | 100% |  |  |  |  | PG-DEV-1; PG-DEV-2 | 240h | 240h |
| 5 | 1.1.3 | ARISg Database Import & Train the trainer on Argaus database |  | 2d | 2023-02-14 A | 2023-02-15 A | 4 | 100% |  |  |  |  |  |  |  |
| 6 | 1.1.4 | Setup Development ARISg Database & Analysis |  | 3d | 2023-02-16 A | 2023-02-20 | 5 | 85% | 0.45d | 0d |  |  | PG-DEV-1; PG-DEV-2 | 48h | 40.8h |
| 7 | 1.1.5 | Milestone: Completion of ARISg database analysis | milestone | 0d | 2023-02-20 | 2023-02-20 | 6 |  |  | 0d |  |  |  |  |  |
| 8 | 1.2 | **Requirements** |  | 8d | 2023-02-21 | 2023-03-02 |  |  |  | 0d |  |  |  | 168h |  |
| 9 | 1.2.1 | Requirements Workshop |  | 3d | 2023-02-21 | 2023-02-23 | 2 |  |  | 0d |  |  | PG-BA; PG-TL | 48h |  |
| 10 | 1.2.2 | Requirements Author |  | 2d | 2023-02-24 | 2023-02-27 | 9 |  |  | 0d |  |  | PG-BA; PG-TL; PG-VL | 48h |  |
| 11 | 1.2.3 | Requirements Review |  | 2d | 2023-02-28 | 2023-03-01 | 10 |  |  | 89d | 0d |  | PG-VL; UT; PG-PM | 48h |  |
| 12 | 1.2.4 | Requirements Approve |  | 1d | 2023-03-02 | 2023-03-02 | 11 |  |  | 89d | 0d |  | PG-VL; UT; PG-PM | 24h |  |
| 13 | 1.2.5 | Milestone: Finalization of requirements | milestone | 0d | 2023-03-02 | 2023-03-02 | 12 |  |  | 89d |  |  |  |  |  |
| 14 | 1.3 | **Validation Plan** |  | 8d | 2023-02-28 | 2023-03-09 |  |  |  | 76d |  |  |  | 152h |  |
| 15 | 1.3.1 | Val Plan Author |  | 5d | 2023-02-28 | 2023-03-06 | 10 |  |  | 84d | 0d |  | PG-VL; PG-TL | 80h |  |
| 16 | 1.3.2 | Val Plan Review |  | 2d | 2023-03-07 | 2023-03-08 | 15 |  |  | 84d | 0d |  | PG-PM; UT; PG-VL | 48h |  |
| 17 | 1.3.3 | Val Plan Approve |  | 1d | 2023-03-09 | 2023-03-09 | 16 |  |  | 84d | 0d |  | PG-PM; UT; PG-VL | 24h |  |
| 18 | 1.3.4 | Milestone: Finalization of validation plan (VP) | milestone | 0d | 2023-03-09 | 2023-03-09 | 17 |  |  | 84d |  |  |  |  |  |
| 19 | 1.4 | **User and Functional Requirement Specification (UFRS)** |  | 10d | 2023-02-28 | 2023-03-13 |  |  |  | 76d |  |  |  | 72h |  |
| 20 | 1.4.1 | UFRS Author |  | 3d | 2023-02-28 | 2023-03-02 | 10 |  |  | 81d | 5d |  | PG-BA | 24h |  |
| 21 | 1.4.2 | UFRS Review |  | 1d | 2023-03-10 | 2023-03-10 | 17, 20 |  |  | 76d | 0d |  | PG-BA; UT; PG-VL | 24h |  |
| 22 | 1.4.3 | UFRS Approve |  | 1d | 2023-03-13 | 2023-03-13 | 21 |  |  | 76d | 0d |  | PG-BA; UT; PG-VL | 24h |  |
| 23 | 1.5 | **Risk Analysis (RA)** |  | 6d | 2023-03-14 | 2023-03-21 |  |  |  | 76d |  |  |  | 96h |  |
| 24 | 1.5.1 | RA Author |  | 3d | 2023-03-14 | 2023-03-16 | 22 |  |  | 76d | 0d |  | PG-BA | 24h |  |
| 25 | 1.5.2 | RA Review |  | 2d | 2023-03-17 | 2023-03-20 | 24 |  |  | 76d | 0d |  | PG-BA; UT; PG-VL | 48h |  |
| 26 | 1.5.3 | RA Approve |  | 1d | 2023-03-21 | 2023-03-21 | 25 |  |  | 76d | 0d |  | PG-BA; UT; PG-VL | 24h |  |
| 27 | 1.5.4 | Milestone: Finalization of UFRS & RA | milestone | 0d | 2023-03-21 | 2023-03-21 | 26 |  |  | 76d |  |  |  |  |  |

| ID | WBS | Task | Type | Duration | Start | Finish | Predecessors | Total slack | Free slack | Resources | Work |
| --- | --- | --- | --- | --- | --- | --- | --- | --- | --- | --- | --- |
| 28 | 1.6 | **Build** |  | 30d | 2023-02-28 | 2023-04-12 |  | 0d |  |  | 824h |
| 29 | 1.6.1 | Build extract procedure |  | 20d | 2023-02-28 | 2023-03-28 | 10 | 72d |  | PG-DEV-1; PG-TL | 320h |
| 30 | 1.6.2 | Build PDF creation procedure |  | 20d | 2023-02-28 | 2023-03-28 | 10 | 0d |  | PG-DEV-2; PG-TL | 320h |
| 31 | 1.6.3 | Perform Unit Testing |  | 5d | 2023-03-29 | 2023-04-04 | 30 | 0d |  | PG-DEV-1; PG-DEV-2 | 80h |
| 32 | 1.6.4 | Review with business |  | 2d | 2023-04-05 | 2023-04-06 | 31 | 65d |  | PG-DEV-1; PG-DEV-2; PG-TL; UT | 64h |
| 33 | 1.6.5 | Perform Code Review |  | 5d | 2023-04-05 | 2023-04-12 | 31 | 62d | 0d | PG-TL | 40h |
| 34 | 1.6.6 | Milestone: Finalizing build | milestone | 0d | 2023-04-12 | 2023-04-12 | 33 | 62d |  |  |  |
| 35 | 1.7 | **Script Authoring** |  | 23d | 2023-04-05 | 2023-05-08 |  | 0d |  |  | 688h |
| 36 | 1.7.1 | **IQ** |  | 8d | 2023-04-05 | 2023-04-17 |  | 15d |  |  | 176h |
| 37 | 1.7.1.1 | Author IQ |  | 5d | 2023-04-05 | 2023-04-12 | 31 | 15d | 0d | PG-DEV-1; PG-DEV-2 | 80h |
| 38 | 1.7.1.2 | Review IQ |  | 2d | 2023-04-13 | 2023-04-14 | 37 | 15d | 0d | PG-TL; PG-VL; UT; PG-PM | 64h |
| 39 | 1.7.1.3 | Approve IQ |  | 1d | 2023-04-17 | 2023-04-17 | 38 | 15d |  | PG-TL; PG-VL; UT; PG-PM | 32h |
| 40 | 1.7.2 | **OQ** |  | 23d | 2023-04-05 | 2023-05-08 |  | 0d |  |  | 256h |
| 41 | 1.7.2.1 | Author OQ |  | 20d | 2023-04-05 | 2023-05-03 | 31 | 0d |  | PG-TST-1 | 160h |
| 42 | 1.7.2.2 | Review OQ |  | 2d | 2023-05-04 | 2023-05-05 | 41 | 0d |  | PG-PM; PG-TL; PG-VL; UT | 64h |
| 43 | 1.7.2.3 | Approve OQ |  | 1d | 2023-05-08 | 2023-05-08 | 42 | 0d |  | PG-PM; PG-TL; PG-VL; UT | 32h |
| 44 | 1.7.3 | **PQ** |  | 23d | 2023-04-05 | 2023-05-08 |  | 0d |  |  | 256h |
| 45 | 1.7.3.1 | Author PQ |  | 20d | 2023-04-05 | 2023-05-03 | 31 | 0d |  | PG-TST-2 | 160h |
| 46 | 1.7.3.2 | Review PQ |  | 2d | 2023-05-04 | 2023-05-05 | 45 | 0d |  | PG-PM; PG-TL; PG-VL; UT | 64h |
| 47 | 1.7.3.3 | Approve PQ |  | 1d | 2023-05-08 | 2023-05-08 | 46 | 0d |  | PG-PM; PG-TL; PG-VL; UT | 32h |
| 48 | 1.7.3.4 | Milestone: Finalization of qualification scripts (IQs,OQs and PQs) | milestone | 0d | 2023-05-08 | 2023-05-08 | 47 | 44d |  |  |  |
| 49 | 1.8 | **Validation Execution** |  | 94d | 2023-01-23 | 2023-06-06 |  | 23d |  |  | 480h |
| 50 | 1.8.1 | **IQ Execution** |  | 5d | 2023-05-09 | 2023-05-15 |  | 0d |  |  | 128h |
| 51 | 1.8.1.1 | Execute IQ |  | 2d | 2023-05-09 | 2023-05-10 | 39, 43, 47 | 0d |  | PG-DEV-1; PG-DEV-2 | 32h |
| 52 | 1.8.1.2 | Review Execution |  | 2d | 2023-05-11 | 2023-05-12 | 51 | 0d |  | PG-PM; PG-TL; PG-VL; UT | 64h |
| 53 | 1.8.1.3 | Approve Execution |  | 1d | 2023-05-15 | 2023-05-15 | 52 | 0d |  | PG-PM; PG-TL; PG-VL; UT | 32h |

| ID | WBS | Task | Type | Duration | Start | Finish | Predecessors | Total slack | Free slack | Resources | Work |
| --- | --- | --- | --- | --- | --- | --- | --- | --- | --- | --- | --- |
| 54 | 1.8.2 | **OQ Execution** |  | 8d | 2023-05-16 | 2023-05-25 |  | 0d |  |  | 136h |
| 55 | 1.8.2.1 | Execute OQ |  | 5d | 2023-05-16 | 2023-05-22 | 53 | 0d |  | PG-TST-2 | 40h |
| 56 | 1.8.2.2 | Review Execution |  | 2d | 2023-05-23 | 2023-05-24 | 55 | 0d |  | PG-PM; PG-TL; PG-VL; UT | 64h |
| 57 | 1.8.2.3 | Approve Execution |  | 1d | 2023-05-25 | 2023-05-25 | 56 | 0d |  | PG-PM; PG-TL; PG-VL; UT | 32h |
| 58 | 1.8.3 | **PQ Execution** |  | 8d | 2023-05-26 | 2023-06-06 |  | 0d |  |  | 136h |
| 59 | 1.8.3.1 | Execute PQ |  | 5d | 2023-05-26 | 2023-06-01 | 57 | 0d |  | PG-TST-1 | 40h |
| 60 | 1.8.3.2 | Review Execution |  | 2d | 2023-06-02 | 2023-06-05 | 59 | 0d |  | PG-PM; PG-TL; PG-VL; UT | 64h |
| 61 | 1.8.3.3 | Approve Execution |  | 1d | 2023-06-06 | 2023-06-06 | 60 | 0d |  | PG-PM; PG-TL; PG-VL; UT | 32h |
| 62 | 1.8.4 | **Requirement Traceability Matrix (RTM)** |  | 4d | 2023-01-23 | 2023-01-27 |  | 113d |  |  | 80h |
| 63 | 1.8.4.1 | RTM Author |  | 1d | 2023-01-23 | 2023-01-23 |  | 113d | 0d | PG-TL | 8h |
| 64 | 1.8.4.2 | RTM Review |  | 2d | 2023-01-24 | 2023-01-25 | 63 | 113d | 0d | PG-TL; UT; PG-VL | 48h |
| 65 | 1.8.4.3 | RTM Approve |  | 1d | 2023-01-27 | 2023-01-27 | 64 | 113d |  | PG-TL; UT; PG-VL | 24h |
| 66 | 1.8.5 | Milestone: Go/No-Go for PROD | milestone | 0d | 2023-06-06 | 2023-06-06 | 61 | 0d |  | PG-PM; PG-TL; PG-VL; UT |  |
| 67 | 1.9 | **Production Execution** |  | 5d | 2023-06-07 | 2023-06-13 |  | 0d |  |  | 128h |
| 68 | 1.9.1 | **IQ Execution** |  | 3d | 2023-06-07 | 2023-06-09 |  | 0d |  |  | 64h |
| 69 | 1.9.1.1 | Execute IQ |  | 2d | 2023-06-07 | 2023-06-08 | 66 | 0d |  | PG-DEV-1; PG-DEV-2 | 32h |
| 70 | 1.9.1.2 | Review Execution |  | 0.5d | 2023-06-09 | 2023-06-09 | 69 | 0d |  | PG-PM; PG-TL; PG-VL; UT | 16h |
| 71 | 1.9.1.3 | Approve Execution |  | 0.5d | 2023-06-09 | 2023-06-09 | 70 | 0d |  | PG-PM; PG-TL; PG-VL; UT | 16h |
| 72 | 1.9.2 | Milestone: Release Production | milestone | 0d | 2023-06-09 | 2023-06-09 | 71 | 0d |  | PG-PM; PG-TL; PG-VL; UT |  |
| 73 | 1.9.3 | **Validation Summary Report** |  | 2d | 2023-06-12 | 2023-06-13 |  | 18d |  |  | 64h |
| 74 | 1.9.3.1 | Finalize VSR |  | 1d | 2023-06-12 | 2023-06-12 | 71 | 18d | 0d | PG-BA; PG-TST-1; PG-TST-2; PG-VL | 32h |
| 75 | 1.9.3.2 | Review VSR |  | 0.5d | 2023-06-13 | 2023-06-13 | 74 | 18d | 0d | PG-PM; PG-TL; PG-VL; UT | 16h |
| 76 | 1.9.3.3 | Approve VSR |  | 0.5d | 2023-06-13 | 2023-06-13 | 75 | 18d | 0d | PG-PM; PG-TL; PG-VL; UT | 16h |
| 77 | 1.9.3.4 | Milestone: Completion of Release | milestone | 0d | 2023-06-13 | 2023-06-13 | 76 | 18d |  |  |  |
| 78 | 1.10 | Hypercare |  | 20d | 2023-06-12 | 2023-07-10 | 72 | 0d |  |  |  |
