# PG Resources 2021 v3

Schedule from MS Project, 2023-01-02 to 2027-12-24, A marks actual dates.

## Calendars

- Standard: Mon-Fri 08:00-12:00, 13:00-17:00; Sat-Sun off.

## Resources

| Resource | Group | Notes |
| --- | --- | --- |
| 100-Lead |  |  |
| 110-PM |  |  |
| 200-B.Analyst L1 (Junior) |  |  |
| 210-B.Analyst L2 (Mid) |  | For ABV-SOWF07 -- $50 / hr. High margins. Can be a junior resource. / For veeva tickets, Update requirements, create test scripts, create training |
| 220-B.Analyst L3 (Senior) |  |  |
| 300-DEV L1 (Junior) |  |  |
| 310-DEV L2 (Mid) |  | Sobi-SOW-16: Replacement for Raj for ARISg backend support |
| 330-DEV L3 (Senior) |  |  |
| 400-Tester |  |  |
| 410-Tester-OQ |  |  |
| 420-Tester-PQ |  |  |
| 430-Val Lead |  |  |
| Agarwal_Rahul | PG India |  |
| ZZ_Agarwal_Vikas | US Emp |  |
| Aggarwal_Sharad | PG India |  |
| Bajpai_Gaurav | PG India |  |
| Battula_Azad | US Ext |  |
| Bhardwaj_Gaurav | PG India |  |
| Caeiro_Hilton Savio | US Emp |  |
| Desai_Karishma S. | US Emp |  |
| Diaz_Marcelo | Partner |  |
| Garg_Shivam | PG India |  |
| Jani_Umang | US Emp |  |
| Kapoor_Ashish | PG India |  |
| Karakoti_Digvijay Singh | PG India |  |
| Kedia_Ujjawal | PG India |  |
| Zuccarello_Priscilla M | US Emp |  |
| Kiriyan_Midhun | US Ext |  |
| Kohare_Sandeep | PG India | Sobi-SOW16: BO and verification |
| Kumar_Edem Raj | PG India | SOBI-SOW21: Raj to lead reporting stream (needs to be transitioned to someone else) / SOBI-SOW16: Raj is the only developer. Try to get some bandwidth from Abijith, (issues with applicatiion and reports development) -- Primary BO development / BIIB-SOW020: Raj spending 6+hrs per day building views required for BO universe. Allocate Vineet + Umang to reduce raj to 3Hrs a day. |
| Kumar_Manish | PG India |  |
| Sharma_Narendra Kumar | PG India |  |
| Kumar_Pushpendra | PG India | BIIBSOW19: BO resource |
| Kuniyil_Abijith | PG India | Sobi-SOW-21- Cognos reports |
| Laguerre_Vladimir J. | Partner |  |
| Maindola_Ankit | PG India |  |
| Mishra_Nikita | PG India / HR |  |
| Mishra_Rishabh | PG India |  |
| Mukherjee_Pragati | PG India |  |
| Muthukrishnan_Padmanabhan Gudi | PG India |  |
| Nagina_Vivek | PG India | 23-Sep: Sobi-SOW16: verifications and report development. Difficult to staff on BIIB. |
| Panday_Abhishek | PG India |  |
| Patel_Krishna | Partner |  |
| Rajput_Rahul | PG India |  |
| Sethi_Mohit | PG India |  |
| Shakya_Utkarsh | PG India |  |
| Sharma_Shivani | PG India |  |
| Shenoy_Jayaprakash | PG India |  |
| Singh_Hemendra | PG India |  |
| Singh_Neha | PG India | 23-Sep: Sobi-SOW-16: testing. Will go on mater. leave. 15-Nov |
| Singh_Vineet Kumar | US Emp |  |
| Sultana_Razia | PG India |  |
| Tomer_Nitesh | PG India |  |
| Tyagi_Shweta | PG India |  |
| Vijay_Abhishek | PG India |  |
| Whittle_Vince | US Emp |  |
| Yadav_Manoj | PG India |  |
| 520-MS-BI L2 (Mid) |  | Replace Neha in Nov |
| 510-MS-BI L1 (Junior) |  |  |
| 500-MS-MDM |  |  |
| 530-MS-BI L3 (Senior) |  |  |
| Singh_Anjala | US Ext |  |
| 600-Product Support |  |  |
| 700-Quality |  |  |
| 800-BI L1 (Junior) |  |  |
| 810-BI L2 (Mid) |  | Sobi-SOW-21: Cognos Dev ongoing |
| 820-BI L3 (Senior) |  |  |
| Baliga_Poonam M | PG India |  |
| Chauhan_Ajay Kumar Singh | PG India | APL DM SOW5 - Val Lead |
| Kilari_Sureshbabu | PG India |  |
| Mahajan_Hitesh | PG India |  |
| Srinivas_Harish | PG India |  |
| 230-LSMV Lead (Senior) |  |  |
| Patel_Kunal Hansraj | US Emp |  |
| Babu_Sushma Mandya | PG India |  |
| Acharya_Vasudeva Udupi | PG India |  |
| 352-DEV DM L2 (Med) |  | 23-Sep: Sobi SOW-016: Supporting Raj. / 18-Aug-2021: BIIB SOW-019 : Replacement for Nikhil Grover / 18-Aug-2021: CELG-SOW-019 : Replacement for Atul Gupta |
| 350-DEV DM L1(Junior) |  |  |
| 355-DEV DM L3 (Senior) |  |  |
| Bhat_Prasad KR | PG India |  |
| Pashya_Prasanth Reddy | PG India | Sobi-SOW-21: Cognos Dev / Assigned to BMS Reports |
| Matli_Mallikarjuna Reddy | PG India |  |
| Vishwanath_Vinutha | PG India |  |
| 240-BA-TRN L1 (Junior) |  |  |
| 242-BA-TRN L3 (Senior) |  |  |
| 241-BA-TRN L2 (Mid) |  |  |
| Khan_Arif | PG India | Assign to BIIB Managed Services |
| Khan_Mohammad Shazid | PG India |  |
| Venkatreddy_Yarramreddy | PG India | Sobi-SOW-21: Cognos Dev |
| Sykes_Emily | US Emp |  |
| Ginka_Vishnu Vardhan | PG India | Assigned to BMS Reports |
| Biyani_Kapil Vijay | PG India |  |
| Gupta_Kashika | PG India |  |
| Mishra_Saumya | US Emp | BIIB-SOW020: Responsible for building BO universe. Dependent on views being created by other team members like Raj. Participate in calls twice a week. Works on design of universe in remain of time. |
| Sunkara_Ashok | US Ext |  |
| Pandey_Niharika | PG India | Assigned to NEOS |
| Sharma_Arpit | PG India | Assigned to NEOS |
| Kumar_Prashant | PG India | Assigned to ABV |
| Minhas_Mrigank | PG India |  |
| Lavania_Sukirti | PG India |  |
| Kulkarni_Gayatri | PG India |  |
| Saxena_Sahitya | PG India | Assigned to Sobi |
| Dixit_Shubham | PG India |  |
| Chinwan_Tanu | PG India |  |
| Sharma_Arun | PG India |  |
| Sahu_Prachitosh | PG India |  |
| Vaidya_Rahul | PG India |  |
| Kaur_Pushpinder | PG India |  |
| Mallappa_Nagaraju | PG India | Sobi-SOW016: L1 &L2 ARISg Configuration |
| Ganta_Anil Kumar | PG India |  |
| Bacham_Venkata Naidu | PG India |  |
| Duyodhana_Ajay | PG India |  |
| Mehta_Khyati | PG India |  |
| Kholkar_Prasad Shubash | PG India |  |
| Patil_Prakash | PG India |  |
| S_Vidyashree | PG India |  |
| Kadagala_Mounika | US Ext |  |
| Bhuma_Bhaskar Reddy | PG India |  |
| Lunagaria_Ashish | PG India |  |
| Holla_Shubha | PG India | 4JAN: Sobi-HELGA: Replaces Poonam. |
| Kumar_Amit | PG India |  |
| Bhatnagar_Abhishek | PG India |  |
| Husna_Nuzhat | PG India |  |
| Pradhan_Biswajit | PG India |  |
| Thakur_Varun | PG India |  |
| Chandu_Pranya | PG India |  |
| Somepalli_Venkatrao | PG India |  |
| Kalaiah_Bopanna | PG India |  |
| Ramnayaka_Santosh Krishna | PG India |  |
| Gairola_Abhishek | PG India |  |
| Nair_Kirthana | PG India |  |
| Lokare_Kranti Ravindra | PG India |  |
| Singh_Amita | PG India |  |
| Kumar_Avanish | India Ext |  |
| Swamy_Yashaswini Kendaganna | PG India |  |
| Nagaraja_Madhu Kondli | PG India |  |
| Ranjolker_Amitkumar | PG India |  |
| Mallaguri_Venkantramana | PG India |  |
| ZZ_Sadare_Rajendra | PG India |  |
| Agarwal_Monica | PG India |  |
| Agrawal_Sunaina | PG India |  |
| Vodnala_Ramesh | PG India |  |
| Seth_Chhavi | PG India |  |
| Avinash_Sapna | US Emp |  |
| Kumar_Anil | PG India |  |
| Kumar_Gollapalli Pavan | PG India |  |
| Garg_Diksha | PG India |  |
| Gupta_Kajal | PG India |  |
| Kumar_Rahul | PG India |  |
| Shamim_Nazia | PG India |  |
| Mehta_Vasu | PG India |  |
| Awasthi_Abhishek | PG India |  |
| Srivastava_Ayush | PG India |  |
| Jha_Bhavesh | PG India |  |
| Gupta_Vinay | PG India |  |
| Ram_Santosh Kumar | PG India |  |
| N R_Arpitha | PG India |  |
| Goswami_Kakoli | PG India |  |
| Rawat_Ashish | PG India |  |
| Shri_Divya M J | PG India |  |
| Ahamed_Faizal | PG India |  |
| Jain_Saurabh | PG India |  |
| Mishra_Supriya | PG India |  |
| Gangadhar_Manju | US Emp |  |
| Bhardwaj_Malvika | PG India |  |
| Rawat_Ankit | PG India |  |
| Upadhyay_Vikash Kumar | PG India |  |
| Gowda_Indira | PG India |  |
| Kumar_Naveen K | PG India |  |
| Mishra_Saumya2 | US Emp |  |
| Tiwari_Arvind | PG India |  |
| Ali_Amaan | PG India |  |
| Medaboina_Pooja | PG India |  |
| Gupta_Vansh | PG India |  |
| Sharma_Tanushree | PG India |  |
| Sravani_Sneha |  |  |
| Singh_Priyam | PG India |  |
| Harikrishna_Jasthi | PG India |  |

## Schedule

| ID | WBS | Task | Type | Duration | Start | Finish | Complete | Remaining | Total slack | Constraint | Resources | Work | Actual work | Text1 | Text3 |
| --- | --- | --- | --- | --- | --- | --- | --- | --- | --- | --- | --- | --- | --- | --- | --- |
| 1 | 1 | **GNE** |  | 260d | 2023-01-02 | 2023-12-29 |  |  | 1040d |  |  | 44438h |  |  |  |
| 2 | 1.1 | GNE-SOW018-Managed Services 2022-23 |  | 259d | 2023-01-03 | 2023-12-29 |  |  | 1040d | start no earlier than 2023-01-03 | Diaz_Marcelo [75%]; Sethi_Mohit; Kohare_Sandeep [50%]; Rajput_Rahul; Tomer_Nitesh; Ramnayaka_Santosh Krishna; Kumar_Pushpendra [50%]; Karakoti_Digvijay Singh; Pandey_Niharika; Srinivas_Harish; Babu_Sushma Mandya; Duyodhana_Ajay; Lavania_Sukirti; Ram_Santosh Kumar; Ranjolker_Amitkumar | 27634h |  | MS | RVW |
| 3 | 1.2 | GNE-SOW020-LSMV |  | 260d | 2023-01-02 | 2023-12-29 |  |  | 1040d | finish no earlier than 2023-12-29 | Panday_Abhishek; Kumar_Edem Raj; Matli_Mallikarjuna Reddy; Kalaiah_Bopanna; Somepalli_Venkatrao; Sharma_Shivani; Ginka_Vishnu Vardhan | 14560h |  |  | RVW |
| 4 | 1.3 | GNE-SOW020-LSMV-CO-01-DM |  | 259d | 2023-01-02 | 2023-12-29 |  |  | 1040d | finish no earlier than 2023-12-29 | Bajpai_Gaurav [50%]; Kuniyil_Abijith | 2244h |  |  | RVW |
| 5 | 2 | **ABV** |  | 260d | 2023-01-02 | 2023-12-31 |  |  | 35d |  |  | 25328h |  |  |  |
| 6 | 2.1 | ABBV-SOW043-Veeva Report Support |  | 239d | 2023-01-02 | 2023-12-29 |  |  | 1040d | start no earlier than 2023-01-02 | Kadagala_Mounika; Mishra_Saumya; Kuniyil_Abijith [50%]; Mallaguri_Venkantramana | 5132h |  |  | RVW |
| 7 | 2.2 | ABBV-SOW051-OSOP System Support (Veeva) |  | 130d | 2023-07-03 | 2023-12-29 |  |  | 1040d | start no earlier than 2023-07-03 | Patel_Kunal Hansraj [90%]; Sultana_Razia; Battula_Azad; S_Vidyashree; Husna_Nuzhat; Kumar_Prashant; Vaidya_Rahul; Patel_Krishna [10%]; Whittle_Vince | 6576h |  |  | RVW |
| 8 | 2.3 | ABBV-SOW045-Data Mngt report exe (Jody T. 2023) |  | 227.5d | 2023-01-02 | 2023-12-29 |  |  | 1040d | start no earlier than 2023-01-02 | 510-MS-BI L1 (Junior) [200%] | 3640h |  |  | OPN |
| 9 | 2.4 | ABBV-SOW047-BTS Proejct coordinator | manual | 226d | 2023-02-20 | 2023-12-31 |  |  |  |  | Agarwal_Rahul; Rawat_Ashish; Bhardwaj_Malvika | 5032h |  |  |  |
| 10 | 2.5 | ABBV-SOW044-AGN DR Testing |  | 5.75mo | 2023-01-02 | 2023-06-09 |  |  | 1185d | finish no earlier than 2023-06-09 | Sharma_Arpit; Kumar_Rahul; Maindola_Ankit | 2760h |  |  | RVW |
| 11 | 2.6 | ABBV-SOW049-GMA Veeva Implementation PM | manual | 175d | 2023-04-01 | 2023-11-30 |  |  |  |  | Singh_Anjala | 1400h |  |  |  |
| 12 | 2.7 | ABBV-SOW050-Veeva Advisory Service | manual | 197d | 2023-04-01 | 2023-12-31 |  |  |  |  | Patel_Krishna [50%] | 788h |  |  |  |
| 13 | 3 | **EISAI** |  | 260d | 2023-01-02 | 2023-12-29 |  |  | 130d |  |  | 13522h |  |  |  |
| 14 | 3.1 | EISAI-SOW015-ARISg Managed Services 2022 |  | 65d | 2023-01-02 | 2023-03-31 |  |  | 1235d | start no earlier than 2023-01-02 | Singh_Vineet Kumar [10%]; Bhardwaj_Gaurav [15%]; Jani_Umang [10%]; Lavania_Sukirti [20%] | 286h |  |  |  |
| 15 | 3.2 | EISAI-SOW016-LSMV Restart |  | 162d | 2023-01-02 | 2023-08-15 |  |  | 1138d | start no earlier than 2023-01-02 | Caeiro_Hilton Savio; Singh_Vineet Kumar; Baliga_Poonam M [25%]; Bhardwaj_Gaurav; Gupta_Kajal; Bhat_Prasad KR; Vodnala_Ramesh [50%]; Garg_Diksha; Kumar_Gollapalli Pavan; Goswami_Kakoli; Kumar_Rahul; Sharma_Arpit | 11156h |  |  | RVW |
| 16 | 3.3 | EISAI-SOWF01-Validation services | manual | 130d | 2023-07-03 | 2023-12-29 |  |  |  |  | Vishwanath_Vinutha; Chauhan_Ajay Kumar Singh | 2080h |  |  |  |
| 17 | 4 | **BIIB** |  | 260d | 2023-01-02 | 2023-12-29 |  |  | 115d |  |  | 16672h |  |  |  |
| 18 | 4.1 | BIIB-SOW026-Managed Services |  | 260d | 2023-01-02 | 2023-12-29 |  |  | 1040d | start no earlier than 2023-01-02 | Aggarwal_Sharad; Kapoor_Ashish; Minhas_Mrigank; Khan_Arif; Lunagaria_Ashish; Singh_Neha; Mehta_Khyati; Chandu_Pranya; Kumar_Pushpendra [50%] | 15860h |  | MS | RVW |
| 19 | 4.2 | BIIB-SOW021-BBU SOP 2023 | manual | 145d | 2023-06-12 | 2023-12-29 |  |  |  |  | Patel_Kunal Hansraj [10%]; Sykes_Emily [10%]; Mishra_Saumya2 [50%] | 812h |  |  |  |
| 20 | 5 | **BMS** |  | 260d | 2023-01-02 | 2023-12-29 |  |  | 1040d |  |  | 7581.6h |  |  |  |
| 21 | 5.1 | BMS-SOW03-LSRA 2023 |  | 260d | 2023-01-02 | 2023-12-29 |  |  | 1040d |  | Venkatreddy_Yarramreddy; Kilari_Sureshbabu; Mahajan_Hitesh; Laguerre_Vladimir J. [2%]; Kulkarni_Gayatri [50%]; Pashya_Prasanth Reddy | 7581.6h |  |  | RVW |
| 22 | 6 | **Sobi** |  | 520d | 2023-01-02 A | 2024-12-27 | 2% | 507.43d | 780d |  |  | 21986.8h | 1580h |  |  |
| 23 | 6.1 | SOBI-SOW031-Managed Services 2023 |  | 196d | 2023-01-02 A | 2023-10-02 | 18% | 160.09d | 1104d | finish no earlier than 2023-12-29 | Shenoy_Jayaprakash; Nagina_Vivek; Kohare_Sandeep [50%]; Mallappa_Nagaraju; Chinwan_Tanu; Patil_Prakash | 8624h | 1580h | MS | RVW |
| 24 | 6.2 | SOBI-SOW031-Reports |  | 260d | 2023-01-02 | 2023-12-29 |  |  | 1040d | start no earlier than 2023-01-02 | Pashya_Prasanth Reddy; Ganta_Anil Kumar; Bacham_Venkata Naidu; Kedia_Ujjawal [20%] | 6300.8h |  |  | RVW |
| 25 | 6.3 | SOBI-SOW034-SOP Analyst |  | 185d | 2023-01-02 | 2024-12-27 |  |  | 780d | start no earlier than 2023-01-02 | Sykes_Emily [50%] | 740h |  |  |  |
| 26 | 6.4 | SOBI-SOW033-Release Management |  | 260d | 2023-01-02 | 2023-12-29 |  |  | 1040d |  | Jani_Umang [10%]; Patel_Kunal Hansraj [10%]; Gowda_Indira [10%]; 210-B.Analyst L2 (Mid) [10%] | 832h |  |  |  |
| 27 | 6.5 | SOBI-SOW037-ODIN 2023H1 |  | 130d | 2023-01-02 | 2023-06-30 |  |  | 1170d |  | Laguerre_Vladimir J. [25%]; Sykes_Emily [75%] | 1040h |  |  |  |
| 28 | 6.6 | SOBI-SOW038-Lonca Data Migration | manual | 145d | 2023-03-13 | 2023-09-29 |  |  |  |  | Gangadhar_Manju; Laguerre_Vladimir J. [5%] | 1218h |  |  |  |
| 29 | 6.7 | SOBI-SOW039-RADAR 2023Q2 Support | manual | 80d | 2023-03-13 | 2023-06-30 |  |  |  |  | Laguerre_Vladimir J. [25%]; Kiriyan_Midhun; Desai_Karishma S. | 1392h |  |  |  |
| 30 | 6.8 | SOBI-SOW040-Data Migration Assessments | manual | 60d | 2023-06-12 | 2023-09-01 |  |  |  |  | Muthukrishnan_Padmanabhan Gudi | 480h |  |  |  |
| 31 | 6.9 | SOBI-SOW041-OPS Chief of Staff | manual | 125d | 2023-07-03 | 2023-12-22 |  |  |  |  | Kiriyan_Midhun | 1000h |  |  |  |
| 32 | 6.10 | SOBI-SOW042-RADAR Stabilization | manual | 45d | 2023-07-03 | 2023-09-01 |  |  |  |  | Desai_Karishma S. | 360h |  |  |  |

| ID | WBS | Task | Type | Duration | Start | Finish | Total slack | Constraint | Resources | Work | Text1 | Text3 |
| --- | --- | --- | --- | --- | --- | --- | --- | --- | --- | --- | --- | --- |
| 33 | 7 | **UBC** |  | 108d | 2023-01-02 | 2023-05-31 | 0d |  |  | 2625.6h |  |  |
| 34 | 7.1 | UBC-SOW013-Master Data Maintenance |  | 108d | 2023-01-02 | 2023-05-31 | 1192d | start no earlier than 2023-01-02 | Dixit_Shubham; Thakur_Varun | 1728h | MS | RVW |
| 35 | 7.2 | UBC-SOW013-Technical Analyst Support | manual | 42d | 2023-01-02 | 2023-05-31 |  |  | Vodnala_Ramesh [10%] | 33.6h |  | RVW |
| 36 | 7.3 | UBC-SOW013-Gateway Services | manual | 108d | 2023-01-02 | 2023-05-31 |  |  | Pradhan_Biswajit | 864h |  | RVW |
| 37 | 8 | **Taiho** |  | 260d | 2023-01-02 | 2023-12-29 | 0d |  |  | 1413.2h |  |  |
| 38 | 8.1 | TAIHO-SOW02-Release Management | manual | 80d | 2023-01-02 | 2023-04-21 |  |  | Patel_Kunal Hansraj [10%]; Jani_Umang [50%]; Chauhan_Ajay Kumar Singh [50%] | 675.2h |  | RVW |
| 39 | 8.2 | TAIHO-SOW03-Release Management 2023 | manual | 205d | 2023-03-20 | 2023-12-29 |  |  | Patel_Kunal Hansraj [5%]; Jani_Umang [20%]; Chauhan_Ajay Kumar Singh [20%] | 738h |  | RVW |
| 40 | 9 | **UT** |  | 70d | 2023-01-23 | 2023-04-30 | 0d |  |  | 3048h |  |  |
| 41 | 9.1 | UT-SOW03-ARISg to Argus Audit Trail | manual | 70d | 2023-01-23 | 2023-04-30 |  |  | ZZ_Sadare_Rajendra [50%]; 355-DEV DM L3 (Senior); Yadav_Manoj; Mishra_Rishabh; Goswami_Kakoli; 410-Tester-OQ; Kulkarni_Gayatri [50%]; Bajpai_Gaurav [10%] | 3048h |  | OPN |
| 42 | 10 | **BeiGene** |  | 130d | 2023-01-02 | 2023-06-30 | 0d |  |  | 2080h |  |  |
| 43 | 10.1 | BGNE-SOW Change Orders for 2023 H1 | manual | 130d | 2023-01-02 | 2023-06-30 |  |  | Bhuma_Bhaskar Reddy; Kumar_Avanish | 2080h |  | RVW |
| 44 | 11 | **Teva** |  | 110d | 2023-01-30 | 2023-06-30 | 0d |  |  | 836h |  |  |
| 45 | 11.1 | TEVA-SOW003-NEOS Implementation Phase 2 | manual | 110d | 2023-01-30 | 2023-06-30 |  |  | Mukherjee_Pragati [50%]; Kedia_Ujjawal [25%]; Tyagi_Shweta [15%]; Garg_Shivam [5%] | 836h |  |  |
| 46 | 12 | **Octapharma** |  | 231d | 2023-01-23 | 2023-12-11 | 0d |  |  | 25581.6h |  |  |
| 47 | 12.1 | OCTA-SOW02-LSMV Implementation | manual | 231d | 2023-01-23 | 2023-12-11 |  | start no earlier than 2023-01-23 | Laguerre_Vladimir J. [20%]; Acharya_Vasudeva Udupi; Baliga_Poonam M [50%]; Vishwanath_Vinutha; 400-Tester [500%]; Avinash_Sapna; ZZ_Agarwal_Vikas; Holla_Shubha; Vijay_Abhishek; Sharma_Arun; Saxena_Sahitya; 410-Tester-OQ; Kholkar_Prasad Shubash; Ahamed_Faizal; Mishra_Supriya; N R_Arpitha; Shri_Divya M J | 25581.6h |  | OPN |
| 48 | 13 | **EQRx** |  | 65d | 2023-01-02 | 2023-03-31 | 0d |  |  | 286h |  |  |
| 49 | 13.1 | EQRX-SOW002-PM Readiness and MSR support | manual | 65d | 2023-01-02 | 2023-03-31 |  |  | Laguerre_Vladimir J. [5%]; Patel_Kunal Hansraj [25%]; Sykes_Emily [25%] | 286h |  | OPN |
| 50 | 14 | **Immunocore** |  | 145d | 2023-06-12 | 2023-12-29 | 0d |  |  | 5800h |  |  |
| 51 | 14.1 | IMM-SOW001-2023 Reporting Factory | manual | 145d | 2023-06-12 | 2023-12-29 |  |  | Sravani_Sneha; 355-DEV DM L3 (Senior); 310-DEV L2 (Mid); 410-Tester-OQ; 400-Tester | 5800h |  |  |
| 52 | 15 | **Corcept** |  | 60d | 2023-06-19 | 2023-09-08 | 0d |  |  | 600h |  |  |
| 53 | 15.1 | COR-SOW001-BPO Selection | manual | 60d | 2023-06-19 | 2023-09-08 |  |  | Laguerre_Vladimir J. [25%]; 210-B.Analyst L2 (Mid) | 600h |  |  |
| 54 | 16 | **Products** |  | 260d | 2023-01-02 | 2023-12-29 | 0d |  |  | 42920h |  |  |
| 55 | 16.1 | PROD-NEOS | manual | 260d | 2023-01-02 | 2023-12-29 |  |  | Bajpai_Gaurav [50%]; Kedia_Ujjawal; Garg_Shivam; Mishra_Rishabh; Patel_Krishna [25%]; ZZ_Agarwal_Vikas [50%]; Muthukrishnan_Padmanabhan Gudi [25%]; Maindola_Ankit; Tyagi_Shweta; Sharma_Arpit; Pandey_Niharika; Bhatnagar_Abhishek; Harikrishna_Jasthi | 20264h |  |  |
| 56 | 16.2 | PROD-MedCodr-DEV | manual | 260d | 2023-01-02 | 2023-12-29 |  |  | Sharma_Narendra Kumar; 310-DEV L2 (Mid); Singh_Hemendra; Lokare_Kranti Ravindra; Kumar_Amit; Nair_Kirthana; Biyani_Kapil Vijay; Gupta_Kashika; Agrawal_Sunaina; Gairola_Abhishek; Awasthi_Abhishek; Shakya_Utkarsh | 22656h |  |  |

| ID | WBS | Task | Duration | Start | Finish | Total slack | Constraint | Resources | Work |
| --- | --- | --- | --- | --- | --- | --- | --- | --- | --- |
| 57 | 17 | **Support** | 1300d | 2023-01-02 | 2027-12-24 | 0d |  |  | 31774h |
| 58 | 17.1 | SUP-Products | 260d | 2023-01-02 | 2023-12-29 | 1040d | start no earlier than 2023-01-02 | 600-Product Support [200%] | 4160h |
| 59 | 17.2 | SUP-QA | 260d | 2023-01-02 | 2023-12-29 | 1040d | start no earlier than 2023-01-02 | Diaz_Marcelo [25%]; Caeiro_Hilton Savio [25%]; Muthukrishnan_Padmanabhan Gudi [25%]; 700-Quality; Swamy_Yashaswini Kendaganna | 5022h |
| 60 | 17.3 | SUP-Training Tool | 260d | 2023-01-02 | 2023-12-29 | 1040d | start no earlier than 2023-01-02 | Sharma_Narendra Kumar; 420-Tester-PQ | 3800h |
| 61 | 17.4 | SUP-eQUATe | 260d | 2023-01-02 | 2023-12-29 | 1040d | start no earlier than 2023-01-02 |  |  |
| 62 | 17.5 | Company-IND | 1300d | 2023-01-02 | 2027-12-24 | 0d | start no earlier than 2023-01-02 | Agarwal_Rahul [20%]; Mishra_Nikita; Khan_Mohammad Shazid; Sahu_Prachitosh; Kaur_Pushpinder; Singh_Amita; Kumar_Manish; Agarwal_Monica; Tiwari_Arvind | 16720h |
| 63 | 17.6 | Company-USA | 259d | 2023-01-03 | 2023-12-29 | 1040d | finish no earlier than 2023-12-29 | Zuccarello_Priscilla M | 2072h |
